# plan de trabajo_integraciones

Schedule from MS Project, 2016-11-07 to 2017-12-28, A marks actual dates.

## Calendars

- Standard: Mon-Fri 08:00-12:00, 13:00-17:00; Sat-Sun off. Exceptions (off unless hours are given): 2017-12-25 (FestivoNavidad).

## Schedule

| ID | WBS | Task | Type | Duration | Start | Finish | Predecessors | Complete | Remaining | Total slack | Free slack |
| --- | --- | --- | --- | --- | --- | --- | --- | --- | --- | --- | --- |
| 2 | 1 | **PREANALISIS** |  | 28.75d | 2017-11-07 A | 2017-12-15 |  | 60% | 11.5d |  |  |
| 3 | 1.1 | Revision del proceso actual recibo CAT frescos | manual | 4d | 2017-11-07 A | 2017-11-10 A |  | 100% |  |  |  |
| 4 | 1.2 | **Análisis** |  | 11d | 2017-11-13 A | 2017-11-27 |  | 45% | 6d | 12.5d |  |
| 5 | 1.2.1 | Analisis de las tareas y el proceso actual |  | 5d | 2017-11-13 A | 2017-11-17 A | 3 | 100% |  |  |  |
| 6 | 1.2.2 | Presentacion de la iniciativa |  | 6d | 2017-11-20 | 2017-11-27 | 5 |  |  | 12.5d | 0d |
| 7 | 2 | **Diseño** |  | 4d | 2017-11-28 | 2017-12-01 |  |  |  | 12.5d |  |
| 8 | 2.1 | Generar DDM |  | 1d | 2017-11-28 | 2017-11-28 | 6 |  |  | 12.5d | 0d |
| 9 | 2.2 | Generar documentacion esquemas |  | 1d | 2017-11-29 | 2017-11-29 | 8 |  |  | 12.5d | 0d |
| 10 | 2.3 | Generar TDN |  | 2d | 2017-11-30 | 2017-12-01 | 9 |  |  | 12.5d | 0d |
| 11 | 3 | **Construcción** |  | 15d | 2017-12-04 A | 2017-12-22 |  | 55% | 6.8d | 2.5d |  |
| 12 | 3.1 | Publicador citas |  | 3d | 2017-12-04 A | 2017-12-06 | 10 | 40% | 1.8d | 11.3d | 0d |
| 13 | 3.2 | Implementar Audit |  | 2d | 2017-12-07 A | 2017-12-08 | 12 | 50% | 1d | 10.3d | 0d |
| 14 | 3.3 | Implementar ErrorHandler |  | 2d | 2017-12-11 A | 2017-12-12 | 13 | 50% | 1d | 9.3d | 0d |
| 15 | 3.4 | Envio cita via http |  | 1d | 2017-12-08 A | 2017-12-13 | 14 | 40% | 0.6d | 8.9d | 0d |
| 16 | 3.5 | Carga citas a tabla de control |  | 1d | 2017-12-14 A | 2017-12-14 | 15 | 40% | 0.6d | 8.5d |  |
| 17 | 3.6 | Subscriptor citas |  | 3d | 2017-12-15 A | 2017-12-19 A | 16 | 100% |  |  |  |
| 18 | 3.7 | Reporte de citas Email |  | 3d | 2017-12-20 A | 2017-12-22 | 17 | 40% | 1.8d | 0d |  |
| 19 | 4 | **Pruebas Unitarias** |  | 2.5d | 2017-12-26 | 2017-12-28 |  |  |  | 0d |  |
| 20 | 4.1 | Matriz de PU |  | 0.5d | 2017-12-26 | 2017-12-26 | 18 |  |  | 0d |  |
| 21 | 4.2 | ComunicarCitaRcontrol |  | 0.5d | 2017-12-26 | 2017-12-26 | 20 |  |  | 0d |  |
| 22 | 4.3 | Insertar Cita en tabla de bitacora |  | 0.5d | 2017-12-27 | 2017-12-27 | 21 |  |  | 0d |  |
| 23 | 4.4 | Envio de reporte de citas via Email |  | 0.5d | 2017-12-27 | 2017-12-27 | 22 |  |  | 0d |  |
| 24 | 4.5 | Comunicar cita extemporanea |  | 0.5d | 2017-12-28 | 2017-12-28 | 23 |  |  | 0d |  |
| 25 | 5 | Implementacion | milestone, manual | 0d | 2016-11-07 | 2016-11-07 |  |  |  |  |  |
