# FINAL

Schedule from MS Project, 2015-04-06 to 2015-09-21.

## Calendars

- Estándar: Mon-Fri 09:00-13:00, 15:00-19:00; Sat-Sun off.

## Resources

| Resource |
| --- |
| Luis Castor |
| Hector Martinez |
| Gustavo Morales |
| AP |
| Cesar Alanis |

## Schedule

| ID | WBS | Task | Type | Duration | Start | Finish | Predecessors | Total slack | Free slack | Resources | Work |
| --- | --- | --- | --- | --- | --- | --- | --- | --- | --- | --- | --- |
| 1 | 1 | **STAR - Requerimiento integraciones FASE I** |  | 121d | 2015-04-06 | 2015-09-21 |  | 0d |  |  | 3618.4h |
| 2 | 1.1 | Planeacion Inicial Requerimientos | manual | 5d | 2015-04-06 | 2015-04-10 |  |  |  | AP | 40h |
| 3 | 1.2 | **Analisis y diseño** |  | 25d | 2015-04-13 | 2015-05-15 |  | 0d |  |  | 545.6h |
| 4 | 1.2.1 | **Compras** |  | 11d | 2015-04-13 | 2015-04-27 |  | 0d |  |  | 200h |
| 5 | 1.2.1.1 | FNR-989 Rebajas en linea |  | 4d | 2015-04-13 | 2015-04-16 | 2 | 0d |  | Luis Castor | 32h |
| 6 | 1.2.1.2 | FNR-072 Ventanas de Importacion |  | 4d | 2015-04-13 | 2015-04-16 | 2 | 5d | 0d | Hector Martinez | 32h |
| 7 | 1.2.1.3 | FR-164 Crear registro articulos abasto de tienda |  | 4d | 2015-04-13 | 2015-04-16 | 2 | 34.1d | 0d | Gustavo Morales | 32h |
| 8 | 1.2.1.4 | SC-03 Reconexion de sugeridos de HEB US y consumos |  | 6d | 2015-04-17 | 2015-04-24 | 5 | 0d |  | Luis Castor | 48h |
| 9 | 1.2.1.5 | SC-04 Reconexion de symbol para abasto via |  | 7d | 2015-04-17 | 2015-04-27 | 6 | 5d | 0d | Hector Martinez | 56h |
| 10 | 1.2.2 | **Ordenes** |  | 0.2d | 2015-04-17 | 2015-04-17 |  | 34.1d |  |  | 1.6h |
| 11 | 1.2.2.1 | Export de ordenes de compra |  | 0.2d | 2015-04-17 | 2015-04-17 | 7 | 34.1d | 0d | Gustavo Morales | 1.6h |
| 12 | 1.2.3 | **Transferencias** |  | 20.8d | 2015-04-17 | 2015-05-15 |  | 5.8d |  |  | 344h |
| 13 | 1.2.3.1 | FNR.1022 Opcion transferencias tienda a CAT |  | 6d | 2015-04-17 | 2015-04-27 | 11 | 34.1d | 0d | Gustavo Morales | 48h |
| 14 | 1.2.3.2 | FNR-1022 Opcion transferencias CAT Import |  | 4d | 2015-04-28 | 2015-05-01 | 9 | 5d | 0d | Hector Martinez | 32h |
| 15 | 1.2.3.3 | FNR-1022 Opcion transferencias CAT Export |  | 4d | 2015-04-27 | 2015-04-30 | 8 | 0d |  | Luis Castor | 32h |
| 16 | 1.2.3.4 | FNR-1031 Transferencias entre tienda Import |  | 5d | 2015-05-01 | 2015-05-07 | 15 | 0d |  | Luis Castor | 40h |
| 17 | 1.2.3.5 | FNR-1031 Transferencias entre tiendas Export |  | 5d | 2015-05-04 | 2015-05-08 | 14 | 5d | 0d | Hector Martinez | 40h |
| 18 | 1.2.3.6 | FNR- Division reclamos |  | 5d | 2015-04-27 | 2015-05-04 | 13 | 34.1d | 0d | Gustavo Morales | 40h |
| 19 | 1.2.3.7 | Monitoreos de Informacion |  | 3d | 2015-05-04 | 2015-05-07 | 18 | 34.1d | 0d | Gustavo Morales | 24h |
| 20 | 1.2.3.8 | SC-01 Reconexion de transferencias entre tiendas |  | 4d | 2015-05-08 | 2015-05-13 | 16 | 0d |  | Luis Castor | 32h |
| 21 | 1.2.3.9 | SC-02 Reconexion de transitos |  | 5d | 2015-05-11 | 2015-05-15 | 17 | 5d | 0d | Hector Martinez | 40h |
| 22 | 1.2.3.10 | FNR-956 Reporte transferencias internas |  | 2d | 2015-05-07 | 2015-05-11 | 19 | 34.1d | 0d | Gustavo Morales | 16h |
| 23 | 1.3 | **Construccion** |  | 51.8d | 2015-05-11 | 2015-07-21 |  | 2.8d |  |  | 1042.4h |
| 24 | 1.3.1 | **Compras** |  | 25.8d | 2015-05-11 | 2015-06-15 |  | 2.8d |  |  | 384h |
| 25 | 1.3.1.1 | FNR-989 Rebajas en linea |  | 7d | 2015-05-14 | 2015-05-22 | 20 | 0d |  | Luis Castor | 56h |
| 26 | 1.3.1.2 | FNR-072 Ventanas de Importacion |  | 8d | 2015-05-18 | 2015-05-27 | 21 | 5d | 0d | Hector Martinez | 64h |
| 27 | 1.3.1.3 | FR-164 Crear registro articulos abasto de tienda |  | 8d | 2015-05-11 | 2015-05-21 | 22 | 34.1d | 0d | Gustavo Morales | 64h |
| 28 | 1.3.1.4 | SC-03 Reconexion de sugeridos de HEB US y consumos |  | 12d | 2015-05-25 | 2015-06-09 | 25 | 0d |  | Luis Castor | 96h |
| 29 | 1.3.1.5 | SC-04 Reconexion de symbol para abasto via |  | 13d | 2015-05-28 | 2015-06-15 | 26 | 5d | 0d | Hector Martinez | 104h |

| ID | WBS | Task | Duration | Start | Finish | Predecessors | Total slack | Free slack | Resources | Work |
| --- | --- | --- | --- | --- | --- | --- | --- | --- | --- | --- |
| 30 | 1.3.2 | **Ordenes** | 0.3d | 2015-05-21 | 2015-05-21 |  | 34.1d |  |  | 2.4h |
| 31 | 1.3.2.1 | Export de ordenes de compra | 0.3d | 2015-05-21 | 2015-05-21 | 27 | 34.1d | 0d | Gustavo Morales | 2.4h |
| 32 | 1.3.3 | **Transferencias** | 43.5d | 2015-05-21 | 2015-07-21 |  | 13.5d |  |  | 656h |
| 33 | 1.3.3.1 | FNR.1022 Opcion transferencias tienda a CAT | 12d | 2015-05-21 | 2015-06-08 | 31 | 34.1d | 0d | Gustavo Morales | 96h |
| 34 | 1.3.3.2 | FNR-1022 Opcion transferencias CAT Import | 8d | 2015-06-16 | 2015-06-25 | 29 | 5d | 0d | Hector Martinez | 64h |
| 35 | 1.3.3.3 | FNR-1022 Opcion transferencias CAT Export | 8d | 2015-06-10 | 2015-06-19 | 28 | 0d |  | Luis Castor | 64h |
| 36 | 1.3.3.4 | FNR-1031 Transferencias entre tienda Import | 9d | 2015-06-22 | 2015-07-02 | 35 | 0d |  | Luis Castor | 72h |
| 37 | 1.3.3.5 | FNR-1031 Transferencias entre tiendas Export | 9d | 2015-06-26 | 2015-07-08 | 34 | 5d | 0d | Hector Martinez | 72h |
| 38 | 1.3.3.6 | FNR- Division reclamos | 11d | 2015-06-08 | 2015-06-23 | 33 | 34.1d | 0d | Gustavo Morales | 88h |
| 39 | 1.3.3.7 | Monitoreos de Informacion | 6d | 2015-06-23 | 2015-07-01 | 38 | 34.1d | 0d | Gustavo Morales | 48h |
| 40 | 1.3.3.8 | SC-01 Reconexion de transferencias entre tiendas | 8d | 2015-07-03 | 2015-07-14 | 36 | 0d |  | Luis Castor | 64h |
| 41 | 1.3.3.9 | SC-02 Reconexion de transitos | 9d | 2015-07-09 | 2015-07-21 | 37 | 5d | 0d | Hector Martinez | 72h |
| 42 | 1.3.3.10 | FNR-956 Reporte transferencias internas | 2d | 2015-07-01 | 2015-07-03 | 39 | 34.1d | 0d | Gustavo Morales | 16h |
| 43 | 1.4 | **Pruebas Unitarias - Desarrollo** | 23.5d | 2015-07-03 | 2015-08-05 |  | 7.5d |  |  | 531.2h |
| 44 | 1.4.1 | **Compras** | 17.5d | 2015-07-03 | 2015-07-28 |  | 7.5d |  |  | 192h |
| 45 | 1.4.1.1 | FNR-989 Rebajas en linea | 2d | 2015-07-15 | 2015-07-16 | 40 | 0d |  | Luis Castor; Cesar Alanis | 32h |
| 46 | 1.4.1.2 | FNR-072 Ventanas de Importacion | 2d | 2015-07-22 | 2015-07-23 | 41 | 5d | 0d | Hector Martinez; Cesar Alanis | 32h |
| 47 | 1.4.1.3 | FR-164 Crear registro articulos abasto de tienda | 2d | 2015-07-03 | 2015-07-07 | 42 | 34.1d | 0d | Gustavo Morales; Cesar Alanis | 32h |
| 48 | 1.4.1.4 | SC-03 Reconexion de sugeridos de HEB US y consumos | 3d | 2015-07-17 | 2015-07-21 | 45 | 0d |  | Luis Castor; Cesar Alanis | 48h |
| 49 | 1.4.1.5 | SC-04 Reconexion de symbol para abasto via | 3d | 2015-07-24 | 2015-07-28 | 46 | 5d | 0d | Hector Martinez; Cesar Alanis | 48h |
| 50 | 1.4.2 | **Ordenes** | 0.2d | 2015-07-07 | 2015-07-07 |  | 34.1d |  |  | 3.2h |
| 51 | 1.4.2.1 | Export de ordenes de compra | 0.2d | 2015-07-07 | 2015-07-07 | 47 | 34.1d | 0d | Gustavo Morales; Cesar Alanis | 3.2h |
| 52 | 1.4.3 | **Transferencias** | 21.3d | 2015-07-07 | 2015-08-05 |  | 10.3d |  |  | 336h |
| 53 | 1.4.3.1 | FNR.1022 Opcion transferencias tienda a CAT | 3d | 2015-07-07 | 2015-07-10 | 51 | 34.1d | 0d | Gustavo Morales; Cesar Alanis | 48h |
| 54 | 1.4.3.2 | FNR-1022 Opcion transferencias CAT Import | 2d | 2015-07-29 | 2015-07-30 | 49 | 5d | 0d | Hector Martinez; Cesar Alanis | 32h |
| 55 | 1.4.3.3 | FNR-1022 Opcion transferencias CAT Export | 2d | 2015-07-22 | 2015-07-23 | 48 | 0d |  | Luis Castor; Cesar Alanis | 32h |
| 56 | 1.4.3.4 | FNR-1031 Transferencias entre tienda Import | 2d | 2015-07-24 | 2015-07-27 | 55 | 0d |  | Luis Castor; Cesar Alanis | 32h |
| 57 | 1.4.3.5 | FNR-1031 Transferencias entre tiendas Export | 2d | 2015-07-31 | 2015-08-03 | 54 | 5d | 0d | Hector Martinez; Cesar Alanis | 32h |
| 58 | 1.4.3.6 | FNR- Division reclamos | 3d | 2015-07-10 | 2015-07-15 | 53 | 34.1d | 0d | Gustavo Morales; Cesar Alanis | 48h |
| 59 | 1.4.3.7 | Monitoreos de Informacion | 2d | 2015-07-15 | 2015-07-17 | 58 | 34.1d | 0d | Gustavo Morales; Cesar Alanis | 32h |
| 60 | 1.4.3.8 | SC-01 Reconexion de transferencias entre tiendas | 2d | 2015-07-28 | 2015-07-29 | 56 | 0d |  | Luis Castor; Cesar Alanis | 32h |
| 61 | 1.4.3.9 | SC-02 Reconexion de transitos | 2d | 2015-08-04 | 2015-08-05 | 57 | 5d | 0d | Hector Martinez; Cesar Alanis | 32h |
| 62 | 1.4.3.10 | FNR-956 Reporte transferencias internas | 1d | 2015-07-17 | 2015-07-20 | 59 | 34.1d | 0d | Gustavo Morales; Cesar Alanis | 16h |

| ID | WBS | Task | Duration | Start | Finish | Predecessors | Total slack | Free slack | Constraint | Resources | Work |
| --- | --- | --- | --- | --- | --- | --- | --- | --- | --- | --- | --- |
| 63 | 1.5 | **Certificacion - Documentacion** | 11.3d | 2015-07-20 | 2015-08-04 |  | 7.3d |  |  |  | 243.2h |
| 64 | 1.5.1 | **Compras** | 5d | 2015-07-20 | 2015-07-27 |  | 34.1d |  |  |  | 80h |
| 65 | 1.5.1.1 | FNR-989 Rebajas en linea | 1d | 2015-07-20 | 2015-07-21 | 62 | 34.1d | 0d |  | Gustavo Morales; Cesar Alanis | 16h |
| 66 | 1.5.1.2 | FNR-072 Ventanas de Importacion | 1d | 2015-07-21 | 2015-07-22 | 65 | 34.1d | 0d |  | Gustavo Morales; Cesar Alanis | 16h |
| 67 | 1.5.1.3 | FR-164 Crear registro articulos abasto de tienda | 1d | 2015-07-22 | 2015-07-23 | 66 | 34.1d | 0d |  | Gustavo Morales; Cesar Alanis | 16h |
| 68 | 1.5.1.4 | SC-03 Reconexion de sugeridos de HEB US y consumos | 1d | 2015-07-23 | 2015-07-24 | 67 | 34.1d | 0d |  | Gustavo Morales; Cesar Alanis | 16h |
| 69 | 1.5.1.5 | SC-04 Reconexion de symbol para abasto via | 1d | 2015-07-24 | 2015-07-27 | 68 | 34.1d | 0d |  | Gustavo Morales; Cesar Alanis | 16h |
| 70 | 1.5.2 | **Ordenes** | 0.2d | 2015-07-27 | 2015-07-27 |  | 34.1d |  |  |  | 3.2h |
| 71 | 1.5.2.1 | Export de ordenes de compra | 0.2d | 2015-07-27 | 2015-07-27 | 69 | 34.1d | 0d |  | Gustavo Morales; Cesar Alanis | 3.2h |
| 72 | 1.5.3 | **Transferencias** | 6.1d | 2015-07-27 | 2015-08-04 |  | 2.1d |  |  |  | 160h |
| 73 | 1.5.3.1 | FNR.1022 Opcion transferencias tienda a CAT | 1d | 2015-07-27 | 2015-07-28 | 71 | 34.1d | 0d |  | Gustavo Morales; Cesar Alanis | 16h |
| 74 | 1.5.3.2 | FNR-1022 Opcion transferencias CAT Import | 1d | 2015-07-28 | 2015-07-29 | 73 | 34.1d | 0d |  | Gustavo Morales; Cesar Alanis | 16h |
| 75 | 1.5.3.3 | FNR-1022 Opcion transferencias CAT Export | 1d | 2015-07-29 | 2015-07-30 | 74 | 34.1d | 0d |  | Gustavo Morales; Cesar Alanis | 16h |
| 76 | 1.5.3.4 | FNR-1031 Transferencias entre tienda Import | 1d | 2015-07-30 | 2015-07-31 | 75 | 34.1d | 0d |  | Gustavo Morales; Cesar Alanis | 16h |
| 77 | 1.5.3.5 | FNR-1031 Transferencias entre tiendas Export | 1d | 2015-07-31 | 2015-08-03 | 76 | 34.1d | 0d |  | Gustavo Morales; Cesar Alanis | 16h |
| 78 | 1.5.3.6 | FNR- Division reclamos | 1d | 2015-08-03 | 2015-08-04 | 77 | 34.1d |  |  | Gustavo Morales; Cesar Alanis | 16h |
| 79 | 1.5.3.7 | Monitoreos de Informacion | 1d | 2015-07-30 | 2015-07-30 | 60 | 0d |  |  | Luis Castor; Cesar Alanis | 16h |
| 80 | 1.5.3.8 | SC-01 Reconexion de transferencias entre tiendas | 1d | 2015-07-31 | 2015-07-31 | 79 | 0d |  |  | Luis Castor; Cesar Alanis | 16h |
| 81 | 1.5.3.9 | SC-02 Reconexion de transitos | 1d | 2015-08-03 | 2015-08-03 | 80 | 0d |  |  | Luis Castor; Cesar Alanis | 16h |
| 82 | 1.5.3.10 | FNR-956 Reporte transferencias internas | 1d | 2015-08-04 | 2015-08-04 | 81 | 0d |  |  | Luis Castor; Cesar Alanis | 16h |
| 83 | 1.6 | **Estabilizacion - Pruebas Integrales** | 34d | 2015-08-05 | 2015-09-21 |  | 0d |  |  |  | 1216h |
| 84 | 1.6.1 | **Ciclo I** | 17d | 2015-08-05 | 2015-08-27 |  | 0d |  |  |  | 608h |
| 85 | 1.6.1.1 | Compras | 10d | 2015-08-05 | 2015-08-18 | 82 | 0d |  |  | Luis Castor; Cesar Alanis | 160h |
| 86 | 1.6.1.2 | Ordenes | 4d | 2015-08-06 | 2015-08-11 | 61 | 5d |  | start no earlier than 2015-07-13 | Hector Martinez; Cesar Alanis | 64h |
| 87 | 1.6.1.3 | Transferencias | 10d | 2015-08-05 | 2015-08-18 | 82 | 0d |  |  | Gustavo Morales; Cesar Alanis | 160h |
| 88 | 1.6.1.4 | Bug Fixing/Recertificacion | 7d | 2015-08-19 | 2015-08-27 | 85, 86, 87 | 0d |  |  | Luis Castor; Hector Martinez; Gustavo Morales; Cesar Alanis | 224h |

| ID | WBS | Task | Type | Duration | Start | Finish | Predecessors | Total slack | Resources | Work |
| --- | --- | --- | --- | --- | --- | --- | --- | --- | --- | --- |
| 89 | 1.6.2 | **Ciclo II** |  | 17d | 2015-08-28 | 2015-09-21 |  | 0d |  | 608h |
| 90 | 1.6.2.1 | Compras |  | 10d | 2015-08-28 | 2015-09-10 | 88 | 0d | Luis Castor; Cesar Alanis | 160h |
| 91 | 1.6.2.2 | Ordenes |  | 4d | 2015-08-28 | 2015-09-02 | 88 | 6d | Hector Martinez; Cesar Alanis | 64h |
| 92 | 1.6.2.3 | Transferencias |  | 10d | 2015-08-28 | 2015-09-10 | 88 | 0d | Gustavo Morales; Cesar Alanis | 160h |
| 93 | 1.6.2.4 | Bug Fixing/Recertificacion |  | 7d | 2015-09-11 | 2015-09-21 | 90, 91, 92 | 0d | Luis Castor; Hector Martinez; Gustavo Morales; Cesar Alanis | 224h |
| 94 | 1.7 | **Revision de avances** |  | 115d | 2015-04-13 | 2015-09-21 |  | 0d |  |  |
| 95 | 1.7.1 | Reunion de estatus 1 | milestone, manual | 0d | 2015-04-13 | 2015-04-13 |  |  |  |  |
| 96 | 1.7.2 | Reunion de estatus 2 | milestone, manual | 0d | 2015-04-20 | 2015-04-20 |  |  |  |  |
| 97 | 1.7.3 | Reunion de estatus 3 | milestone, manual | 0d | 2015-04-27 | 2015-04-27 |  |  |  |  |
| 98 | 1.7.4 | Reunion de estatus 4 | milestone, manual | 0d | 2015-05-04 | 2015-05-04 |  |  |  |  |
| 99 | 1.7.5 | Reunion de estatus 5 | milestone, manual | 0d | 2015-05-11 | 2015-05-11 |  |  |  |  |
| 100 | 1.7.6 | Reunion de estatus 6 | milestone, manual | 0d | 2015-05-18 | 2015-05-18 |  |  |  |  |
| 101 | 1.7.7 | Reunion de estatus 7 | milestone, manual | 0d | 2015-05-25 | 2015-05-25 |  |  |  |  |
| 102 | 1.7.8 | Reunion de estatus 8 | milestone, manual | 0d | 2015-06-01 | 2015-06-01 |  |  |  |  |
| 103 | 1.7.9 | Reunion de estatus 9 | milestone, manual | 0d | 2015-06-08 | 2015-06-08 |  |  |  |  |
| 104 | 1.7.10 | Reunion de estatus 10 | milestone, manual | 0d | 2015-06-15 | 2015-06-15 |  |  |  |  |
| 105 | 1.7.11 | Reunion de estatus 11 | milestone, manual | 0d | 2015-06-22 | 2015-06-22 |  |  |  |  |
| 106 | 1.7.12 | Reunion de estatus 12 | milestone, manual | 0d | 2015-06-29 | 2015-06-29 |  |  |  |  |
| 107 | 1.7.13 | Reunion de estatus 13 | milestone, manual | 0d | 2015-07-06 | 2015-07-06 |  |  |  |  |
| 108 | 1.7.14 | Reunion de estatus 14 | milestone, manual | 0d | 2015-07-13 | 2015-07-13 |  |  |  |  |
| 109 | 1.7.15 | Reunion de estatus 15 | milestone, manual | 0d | 2015-07-20 | 2015-07-20 |  |  |  |  |
| 110 | 1.7.16 | Reunion de estatus 16 | milestone, manual | 0d | 2015-07-27 | 2015-07-27 |  |  |  |  |
| 111 | 1.7.17 | Reunion de estatus 17 | milestone, manual | 0d | 2015-08-03 | 2015-08-03 |  |  |  |  |
| 112 | 1.7.18 | Reunion de estatus 18 | milestone, manual | 0d | 2015-08-10 | 2015-08-10 |  |  |  |  |
| 113 | 1.7.19 | Reunion de estatus 19 | milestone, manual | 0d | 2015-08-17 | 2015-08-17 |  |  |  |  |
| 114 | 1.7.20 | Reunion de estatus 20 | milestone, manual | 0d | 2015-08-24 | 2015-08-24 |  |  |  |  |
| 115 | 1.7.21 | Reunion de estatus 21 | milestone, manual | 0d | 2015-08-31 | 2015-08-31 |  |  |  |  |
| 116 | 1.7.22 | Reunion de estatus 22 | milestone, manual | 0d | 2015-09-07 | 2015-09-07 |  |  |  |  |
| 117 | 1.7.23 | Reunion de estatus 23 | milestone, manual | 0d | 2015-09-14 | 2015-09-14 |  |  |  |  |
| 118 | 1.7.24 | Reunion de estatus 24 | milestone, manual | 0d | 2015-09-21 | 2015-09-21 |  |  |  |  |
