# STAR_F2 1.0

Schedule from MS Project, 2015-09-21 to 2016-01-01.

## Calendars

- Estándar: Mon-Fri 09:00-13:00, 15:00-19:00; Sat-Sun off.

## Resources

| Resource |
| --- |
| Luis Castor |
| Hector Martinez |
| Gustavo Morales |
| AP |
| Cesar Alanis |

## Schedule

| ID | WBS | Task | Type | Duration | Start | Finish | Predecessors | Total slack | Free slack | Resources | Work |
| --- | --- | --- | --- | --- | --- | --- | --- | --- | --- | --- | --- |
| 1 | 1 | **STAR - Requerimiento integraciones FASE II** |  | 74.8d | 2015-09-21 | 2016-01-01 |  |  |  |  | 2219.2h |
| 2 | 1.1 | Planeacion Inicial Requerimientos | manual | 5d | 2015-09-21 | 2015-09-25 |  |  |  | AP | 40h |
| 3 | 1.2 | **Analisis y diseño** |  | 12d | 2015-09-28 | 2015-10-13 |  | 0d |  |  | 250.4h |
| 4 | 1.2.1 | **Recibo** |  | 12d | 2015-09-28 | 2015-10-13 |  | 0d |  |  | 234.4h |
| 5 | 1.2.1.1 | FNR-539 Información de Proveedores |  | 8d | 2015-09-28 | 2015-10-07 | 2 | 38.8d | 0d | Gustavo Morales | 64h |
| 6 | 1.2.1.2 | FNR-908 Trazabilidad de tarimas |  | 0.3d | 2015-09-28 | 2015-09-28 | 2 | 0d |  | Luis Castor | 2.4h |
| 7 | 1.2.1.3 | Recibo - Export |  | 4d | 2015-09-28 | 2015-10-01 | 2 | 38.8d | 0d | Hector Martinez | 32h |
| 8 | 1.2.1.4 | Faltantes y Sobrantes Export |  | 4d | 2015-09-28 | 2015-10-02 | 6 | 0d |  | Luis Castor | 32h |
| 9 | 1.2.1.5 | FNR-1054 Factura Electronica Import |  | 4d | 2015-10-02 | 2015-10-07 | 7 | 38.8d | 0d | Hector Martinez | 32h |
| 10 | 1.2.1.6 | FNR-990 Saldo proveedor para devoluciones |  | 3d | 2015-10-02 | 2015-10-07 | 8 | 0d |  | Luis Castor | 24h |
| 11 | 1.2.1.7 | FR-265 Prorrateo de Recibo de Mcia |  | 2d | 2015-10-08 | 2015-10-09 | 9 | 38.8d | 0d | Hector Martinez | 16h |
| 12 | 1.2.1.8 | FNR- BI 2 Devoluciones a Proveedor |  | 2d | 2015-10-07 | 2015-10-09 | 10 | 0d |  | Luis Castor | 16h |
| 13 | 1.2.1.9 | FR-003 Abasto Proveedores Directos Mercancía a Bordo - DSD |  | 2d | 2015-10-12 | 2015-10-13 | 11 | 38.8d | 0d | Hector Martinez | 16h |
| 14 | 1.2.2 | **Administrador de tareas** |  | 2d | 2015-10-09 | 2015-10-13 |  | 0d |  |  | 16h |
| 15 | 1.2.2.1 | FNR- BI 1 Tareas Asignadas Vs. Tareas Realizadas |  | 2d | 2015-10-09 | 2015-10-13 | 12 | 0d |  | Luis Castor | 16h |
| 16 | 1.3 | **Construccion** |  | 25.8d | 2015-10-08 | 2015-11-12 |  | 3.3d |  |  | 450.4h |
| 17 | 1.3.1 | **Recibo** |  | 25.8d | 2015-10-08 | 2015-11-12 |  | 3.3d |  |  | 434.4h |
| 18 | 1.3.1.1 | FNR-539 Información de Proveedores |  | 17d | 2015-10-08 | 2015-10-30 | 5 | 38.8d | 0d | Gustavo Morales | 136h |
| 19 | 1.3.1.2 | FNR-908 Trazabilidad de tarimas |  | 0.3d | 2015-10-13 | 2015-10-13 | 15 | 0d |  | Luis Castor | 2.4h |
| 20 | 1.3.1.3 | Recibo - Export |  | 8d | 2015-10-14 | 2015-10-23 | 13 | 38.8d | 0d | Hector Martinez | 64h |
| 21 | 1.3.1.4 | Faltantes y Sobrantes Export |  | 8d | 2015-10-13 | 2015-10-23 | 19 | 0d |  | Luis Castor | 64h |
| 22 | 1.3.1.5 | FNR-1054 Factura Electronica Import |  | 9d | 2015-10-26 | 2015-11-05 | 20 | 38.8d | 0d | Hector Martinez | 72h |
| 23 | 1.3.1.6 | FNR-990 Saldo proveedor para devoluciones |  | 6d | 2015-10-23 | 2015-11-02 | 21 | 0d |  | Luis Castor | 48h |
| 24 | 1.3.1.7 | FR-265 Prorrateo de Recibo de Mcia |  | 2d | 2015-11-06 | 2015-11-09 | 22 | 38.8d |  | Hector Martinez | 16h |
| 25 | 1.3.1.8 | FNR- BI 2 Devoluciones a Proveedor |  | 2d | 2015-11-02 | 2015-11-04 | 23 | 0d |  | Luis Castor | 16h |
| 26 | 1.3.1.9 | FR-003 Abasto Proveedores Directos Mercancía a Bordo - DSD |  | 2d | 2015-11-10 | 2015-11-12 | 34 | 0d |  | Hector Martinez | 16h |

| ID | WBS | Task | Duration | Start | Finish | Predecessors | Total slack | Free slack | Resources | Work |
| --- | --- | --- | --- | --- | --- | --- | --- | --- | --- | --- |
| 27 | 1.3.2 | **Administrador de tareas** | 2d | 2015-11-04 | 2015-11-06 |  | 0d |  |  | 16h |
| 28 | 1.3.2.1 | FNR- BI 1 Tareas Asignadas Vs. Tareas Realizadas | 2d | 2015-11-04 | 2015-11-06 | 25 | 0d |  | Luis Castor | 16h |
| 29 | 1.4 | **Pruebas Unitarias - Desarrollo** | 14.8d | 2015-11-02 | 2015-11-20 |  | 4.6d |  |  | 259.2h |
| 30 | 1.4.1 | **Recibo** | 14.8d | 2015-11-02 | 2015-11-20 |  | 4.6d |  |  | 243.2h |
| 31 | 1.4.1.1 | FNR-539 Información de Proveedores | 4d | 2015-11-02 | 2015-11-05 | 18 | 38.8d | 0d | Gustavo Morales; Cesar Alanis | 64h |
| 32 | 1.4.1.2 | FNR-908 Trazabilidad de tarimas | 0.2d | 2015-11-06 | 2015-11-06 | 28 | 0d |  | Luis Castor; Cesar Alanis | 3.2h |
| 33 | 1.4.1.3 | Recibo - Export | 2d | 2015-11-12 | 2015-11-16 | 26 | 0d |  | Hector Martinez; Cesar Alanis | 32h |
| 34 | 1.4.1.4 | Faltantes y Sobrantes Export | 2d | 2015-11-06 | 2015-11-10 | 32 | 0d |  | Luis Castor; Cesar Alanis | 32h |
| 35 | 1.4.1.5 | FNR-1054 Factura Electronica Import | 2d | 2015-11-16 | 2015-11-18 | 33 | 0d |  | Hector Martinez; Cesar Alanis | 32h |
| 36 | 1.4.1.6 | FNR-990 Saldo proveedor para devoluciones | 2d | 2015-11-10 | 2015-11-12 | 34 | 5.8d | 0d | Luis Castor; Cesar Alanis | 32h |
| 37 | 1.4.1.7 | FR-265 Prorrateo de Recibo de Mcia | 1d | 2015-11-18 | 2015-11-19 | 35 | 0d |  | Hector Martinez; Cesar Alanis | 16h |
| 38 | 1.4.1.8 | FNR- BI 2 Devoluciones a Proveedor | 1d | 2015-11-12 | 2015-11-13 | 36 | 5.8d | 0d | Luis Castor; Cesar Alanis | 16h |
| 39 | 1.4.1.9 | FR-003 Abasto Proveedores Directos Mercancía a Bordo - DSD | 1d | 2015-11-19 | 2015-11-20 | 37 | 0d |  | Hector Martinez; Cesar Alanis | 16h |
| 40 | 1.4.2 | **Administrador de tareas** | 1d | 2015-11-13 | 2015-11-16 |  | 5.8d |  |  | 16h |
| 41 | 1.4.2.1 | FNR- BI 1 Tareas Asignadas Vs. Tareas Realizadas | 1d | 2015-11-13 | 2015-11-16 | 38 | 5.8d | 0d | Luis Castor; Cesar Alanis | 16h |
| 42 | 1.5 | **Certificacion - Documentacion** | 14.8d | 2015-11-06 | 2015-11-26 |  | 10.8d |  |  | 163.2h |
| 43 | 1.5.1 | **Recibo** | 14.8d | 2015-11-06 | 2015-11-26 |  | 10.8d |  |  | 147.2h |
| 44 | 1.5.1.1 | FNR-539 Información de Proveedores | 2d | 2015-11-06 | 2015-11-09 | 31 | 38.8d |  | Gustavo Morales; Cesar Alanis | 32h |
| 45 | 1.5.1.2 | FNR-908 Trazabilidad de tarimas | 0.2d | 2015-11-16 | 2015-11-16 | 41 | 5.8d | 0d | Luis Castor; Cesar Alanis | 3.2h |
| 46 | 1.5.1.3 | Recibo - Export | 1d | 2015-11-20 | 2015-11-23 | 39 | 0d |  | Hector Martinez; Cesar Alanis | 16h |
| 47 | 1.5.1.4 | Faltantes y Sobrantes Export | 1d | 2015-11-17 | 2015-11-17 | 45 | 5.8d | 0d | Luis Castor; Cesar Alanis | 16h |
| 48 | 1.5.1.5 | FNR-1054 Factura Electronica Import | 1d | 2015-11-23 | 2015-11-24 | 46 | 0d |  | Hector Martinez; Cesar Alanis | 16h |
| 49 | 1.5.1.6 | FNR-990 Saldo proveedor para devoluciones | 1d | 2015-11-18 | 2015-11-18 | 47 | 5.8d | 0d | Gustavo Morales; Cesar Alanis | 16h |
| 50 | 1.5.1.7 | FR-265 Prorrateo de Recibo de Mcia | 1d | 2015-11-24 | 2015-11-25 | 48 | 0d |  | Hector Martinez; Cesar Alanis | 16h |
| 51 | 1.5.1.8 | FNR- BI 2 Devoluciones a Proveedor | 1d | 2015-11-18 | 2015-11-18 | 47 | 5.8d | 0d | Luis Castor; Cesar Alanis | 16h |
| 52 | 1.5.1.9 | FR-003 Abasto Proveedores Directos Mercancía a Bordo - DSD | 1d | 2015-11-25 | 2015-11-26 | 50 | 0d |  | Hector Martinez; Cesar Alanis | 16h |

| ID | WBS | Task | Type | Duration | Start | Finish | Predecessors | Total slack | Free slack | Resources | Work |
| --- | --- | --- | --- | --- | --- | --- | --- | --- | --- | --- | --- |
| 53 | 1.5.2 | **Administrador de tareas** |  | 1d | 2015-11-19 | 2015-11-19 |  | 5.8d |  |  | 16h |
| 54 | 1.5.2.1 | FNR- BI 1 Tareas Asignadas Vs. Tareas Realizadas |  | 1d | 2015-11-19 | 2015-11-19 | 51 | 5.8d | 0d | Luis Castor; Cesar Alanis | 16h |
| 55 | 1.6 | **Estabilizacion - Pruebas Integrales** |  | 31.8d | 2015-11-19 | 2016-01-01 |  | 0d |  |  | 1056h |
| 56 | 1.6.1 | **Ciclo I** |  | 18.8d | 2015-11-19 | 2015-12-15 |  | 0d |  |  | 528h |
| 57 | 1.6.1.1 | Recibo Bloque A |  | 8d | 2015-11-19 | 2015-11-30 | 49 | 5.8d |  | Gustavo Morales; Cesar Alanis | 128h |
| 58 | 1.6.1.2 | Reciblo Bloque B |  | 8d | 2015-11-26 | 2015-12-08 | 52 | 0d |  | Hector Martinez; Cesar Alanis | 128h |
| 59 | 1.6.1.3 | Administrador de tareas |  | 7d | 2015-11-20 | 2015-11-30 | 54 | 5.8d |  | Luis Castor; Cesar Alanis | 112h |
| 60 | 1.6.1.4 | Bug Fixing/Recertificacion |  | 5d | 2015-12-08 | 2015-12-15 | 57, 58, 59 | 0d |  | Luis Castor; Hector Martinez; Gustavo Morales; Cesar Alanis | 160h |
| 61 | 1.6.2 | **Ciclo II** |  | 13d | 2015-12-15 | 2016-01-01 |  | 0d |  |  | 528h |
| 62 | 1.6.2.1 | Recibo Bloque A |  | 8d | 2015-12-15 | 2015-12-25 | 60 | 0d |  | Gustavo Morales; Cesar Alanis | 128h |
| 63 | 1.6.2.2 | Recibo Bloque B |  | 8d | 2015-12-15 | 2015-12-25 | 60 | 0d |  | Hector Martinez; Cesar Alanis | 128h |
| 64 | 1.6.2.3 | Administrador de tareas |  | 7d | 2015-12-15 | 2015-12-24 | 60 | 1d |  | Luis Castor; Cesar Alanis | 112h |
| 65 | 1.6.2.4 | Bug Fixing/Recertificacion |  | 5d | 2015-12-25 | 2016-01-01 | 62, 63, 64 | 0d |  | Luis Castor; Hector Martinez; Gustavo Morales; Cesar Alanis | 160h |
| 66 | 1.7 | **Revision de avances** |  | 65d | 2015-09-28 | 2015-12-28 |  | 0d |  |  |  |
| 67 | 1.7.1 | Reunion de estatus 1 | milestone, manual | 0d | 2015-09-28 | 2015-09-28 |  |  |  |  |  |
| 68 | 1.7.2 | Reunion de estatus 2 | milestone, manual | 0d | 2015-10-05 | 2015-10-05 |  |  |  |  |  |
| 69 | 1.7.3 | Reunion de estatus 3 | milestone, manual | 0d | 2015-10-12 | 2015-10-12 |  |  |  |  |  |
| 70 | 1.7.4 | Reunion de estatus 4 | milestone, manual | 0d | 2015-10-19 | 2015-10-19 |  |  |  |  |  |
| 71 | 1.7.5 | Reunion de estatus 5 | milestone, manual | 0d | 2015-10-26 | 2015-10-26 |  |  |  |  |  |
| 72 | 1.7.6 | Reunion de estatus 6 | milestone, manual | 0d | 2015-11-02 | 2015-11-02 |  |  |  |  |  |
| 73 | 1.7.7 | Reunion de estatus 7 | milestone, manual | 0d | 2015-11-09 | 2015-11-09 |  |  |  |  |  |
| 74 | 1.7.8 | Reunion de estatus 8 | milestone, manual | 0d | 2015-11-16 | 2015-11-16 |  |  |  |  |  |
| 75 | 1.7.9 | Reunion de estatus 9 | milestone, manual | 0d | 2015-11-23 | 2015-11-23 |  |  |  |  |  |
| 76 | 1.7.10 | Reunion de estatus 10 | milestone, manual | 0d | 2015-11-30 | 2015-11-30 |  |  |  |  |  |
| 77 | 1.7.11 | Reunion de estatus 11 | milestone, manual | 0d | 2015-12-07 | 2015-12-07 |  |  |  |  |  |
| 78 | 1.7.12 | Reunion de estatus 12 | milestone, manual | 0d | 2015-12-14 | 2015-12-14 |  |  |  |  |  |
| 79 | 1.7.13 | Reunion de estatus 13 | milestone, manual | 0d | 2015-12-21 | 2015-12-21 |  |  |  |  |  |
| 80 | 1.7.14 | Reunion de estatus 14 | milestone, manual | 0d | 2015-12-28 | 2015-12-28 |  |  |  |  |  |
