# STAR_F3 1.0

Schedule from MS Project, 2015-12-28 to 2016-09-07.

## Calendars

- Estándar: Mon-Fri 09:00-13:00, 15:00-19:00; Sat-Sun off.

## Resources

| Resource |
| --- |
| Recurso IPC SR 2 |
| Luis Castor |
| Hector Martinez |
| Gustavo Morales |
| Recurso IPC SR 1 |
| AP |
| Cesar Alanis |
| Recurso TIBCO SR 4 |

## Schedule

| ID | WBS | Task | Type | Duration | Start | Finish | Predecessors | Total slack | Free slack | Constraint | Resources | Work |
| --- | --- | --- | --- | --- | --- | --- | --- | --- | --- | --- | --- | --- |
| 1 | 1 | **STAR - Requerimiento integraciones FASE III** |  | 183d | 2015-12-28 | 2016-09-07 |  |  |  |  |  | 9056h |
| 2 | 1.1 | Planeacion Inicial Requerimientos | manual | 5d | 2015-12-28 | 2016-01-01 |  |  |  | start no earlier than 2015-12-28 | AP | 40h |
| 3 | 1.2 | **Analisis y diseño** |  | 38d | 2016-01-04 | 2016-02-24 |  | 0d |  |  |  | 1728h |
| 4 | 1.2.1 | **Articulos** |  | 26d | 2016-01-04 | 2016-02-08 |  | 0d |  |  |  | 560h |
| 5 | 1.2.1.1 | FNR-417 Campos adicionales y atributos de artículos. Información de los artículos de alto valor. |  | 6d | 2016-01-04 | 2016-01-11 | 2 | 62d | 0d |  | Recurso TIBCO SR 4 | 48h |
| 6 | 1.2.1.2 | FNR-015Recetas de artículos |  | 4d | 2016-01-04 | 2016-01-07 | 2 | 0d |  |  | Hector Martinez | 32h |
| 7 | 1.2.1.3 | FR-343.Pantalla Consulta Info. General de Artículos. Muestra una pantalla con la información del artículo. Solicita el UPC/PLU o Artículo para hacer una búsqueda y desplegar la |  | 6d | 2016-01-04 | 2016-01-11 | 2 | 8d | 0d |  | Gustavo Morales | 48h |
| 8 | 1.2.1.4 | Export en linea de producto |  | 1d | 2016-01-12 | 2016-01-12 | 5 | 62d | 0d |  | Recurso TIBCO SR 4 | 8h |
| 9 | 1.2.1.5 | Export en linea de Plan de surtid |  | 1d | 2016-01-04 | 2016-01-04 | 2 | 2d | 0d |  | Luis Castor | 8h |
| 10 | 1.2.1.6 | Export en linea de CasePacks |  | 1d | 2016-01-08 | 2016-01-08 | 6 | 0d |  |  | Hector Martinez | 8h |
| 11 | 1.2.1.7 | FNR-933.Auditoría de PMI |  | 5d | 2016-01-12 | 2016-01-18 | 7 | 8d | 0d |  | Gustavo Morales | 40h |
| 12 | 1.2.1.8 | FNR-981 Promociones |  | 7d | 2016-01-13 | 2016-01-21 | 8 | 62d | 0d |  | Recurso TIBCO SR 4 | 56h |
| 13 | 1.2.1.9 | FR-100 Tarimas en proceso y en armado |  | 7d | 2016-01-19 | 2016-01-27 | 11 | 8d | 0d |  | Gustavo Morales | 56h |
| 14 | 1.2.1.10 | FNR-561.Estatus NO COMPRA para analisis de abasto |  | 4d | 2016-01-11 | 2016-01-14 | 10 | 0d |  |  | Hector Martinez | 32h |
| 15 | 1.2.1.11 | FR-390.Estatus No Compra Ambientes SYMBOL |  | 4d | 2016-01-28 | 2016-02-02 | 13 | 8d | 0d |  | Gustavo Morales | 32h |
| 16 | 1.2.1.12 | FNR-514.Requerimiento se tiene en HEB |  | 12d | 2016-01-22 | 2016-02-08 | 12 | 62d | 0d |  | Recurso TIBCO SR 4 | 96h |
| 17 | 1.2.1.13 | FNR- BI 3 Efecto Góndola |  | 12d | 2016-01-05 | 2016-01-20 | 9 | 2d | 0d |  | Luis Castor | 96h |
| 18 | 1.2.2 | **Inventario** |  | 21d | 2016-01-15 | 2016-02-12 |  | 0d |  |  |  | 304h |
| 19 | 1.2.2.1 | FNR-937.Calendarizacion de Inventario Dinámico desde Tienda |  | 6d | 2016-01-15 | 2016-01-22 | 14 | 0d |  |  | Hector Martinez | 48h |
| 20 | 1.2.2.2 | FR-271.Operación/Ajustes a inventario/Tipo de ajuste: transacciones punto de venta |  | 1d | 2016-02-03 | 2016-02-03 | 15 | 8d | 0d |  | Gustavo Morales | 8h |
| 21 | 1.2.2.3 | FNR-931 Batch para TAG-Compare |  | 3d | 2016-02-09 | 2016-02-11 | 16 | 62d | 0d |  | Recurso TIBCO SR 4 | 24h |
| 22 | 1.2.2.4 | FR-297.Mermas de Articulos x Sucursal |  | 12d | 2016-01-21 | 2016-02-05 | 17 | 2d | 0d |  | Luis Castor | 96h |
| 23 | 1.2.2.5 | FNR- BI 4 Artículos sin movimiento |  | 12d | 2016-01-25 | 2016-02-09 | 19 | 0d |  |  | Hector Martinez | 96h |
| 24 | 1.2.2.6 | FR-297.Mermas de Articulos x Sucursal |  | 3d | 2016-02-04 | 2016-02-08 | 20 | 8d | 0d |  | Gustavo Morales | 24h |
| 25 | 1.2.2.7 | FR-321.Articulos con Inventario Negativo y/o Cero en Linea |  | 1d | 2016-02-12 | 2016-02-12 | 21 | 62d | 0d |  | Recurso TIBCO SR 4 | 8h |

| ID | WBS | Task | Duration | Start | Finish | Predecessors | Total slack | Free slack | Resources | Work |
| --- | --- | --- | --- | --- | --- | --- | --- | --- | --- | --- |
| 26 | 1.2.3 | **Piso Venta** | 38d | 2016-01-04 | 2016-02-24 |  | 9d |  |  | 864h |
| 27 | 1.2.3.1 | FNR-039 Etiquetas en combos y compares | 4d | 2016-02-10 | 2016-02-15 | 23 | 0d |  | Hector Martinez | 32h |
| 28 | 1.2.3.2 | FNR-983 Niveles-EtapasLiquidacion | 6d | 2016-02-16 | 2016-02-23 | 27 | 0d |  | Hector Martinez | 48h |
| 29 | 1.2.3.3 | FNR-1040.Información de Huecos | 9d | 2016-02-09 | 2016-02-19 | 24 | 8d | 0d | Gustavo Morales | 72h |
| 30 | 1.2.3.4 | FR-319.Consumos Internos por Articulo - presupuesto | 12d | 2016-01-04 | 2016-01-19 | 2 | 9d | 0d | Recurso IPC SR 1 | 96h |
| 31 | 1.2.3.5 | FNR-1010.Motivos de Huecos | 12d | 2016-01-20 | 2016-02-04 | 30 | 9d | 0d | Recurso IPC SR 1 | 96h |
| 32 | 1.2.3.6 | FNR-098.Reporte Redención de Combos | 12d | 2016-02-05 | 2016-02-22 | 31 | 9d | 0d | Recurso IPC SR 1 | 96h |
| 33 | 1.2.3.7 | FNR-140.Combo pérdidas | 12d | 2016-01-04 | 2016-01-19 | 2 | 15d | 0d | Recurso IPC SR 2 | 96h |
| 34 | 1.2.3.8 | FNR-503.Sistematizar Reporte Consumo | 12d | 2016-01-20 | 2016-02-04 | 33 | 15d | 0d | Recurso IPC SR 2 | 96h |
| 35 | 1.2.3.9 | FNR-506.Reporte Redención de PILONES | 12d | 2016-02-05 | 2016-02-22 | 34 | 15d | 0d | Recurso IPC SR 2 | 96h |
| 36 | 1.2.3.10 | FNR-408.Captura Vespertina Huecos | 2d | 2016-02-23 | 2016-02-24 | 32 | 9d | 0d | Recurso IPC SR 1 | 16h |
| 37 | 1.2.3.11 | FNR-134.Procesos Diarios | 12d | 2016-02-08 | 2016-02-23 | 22 | 2d | 0d | Luis Castor | 96h |
| 38 | 1.2.3.12 | FNR-408.Captura Vespertina Huecos | 1d | 2016-02-24 | 2016-02-24 | 28 | 0d |  | Hector Martinez | 8h |
| 39 | 1.2.3.13 | FR-319.Consumos Internos por Articulo | 2d | 2016-02-22 | 2016-02-23 | 29 | 8d | 0d | Gustavo Morales | 16h |
| 40 | 1.3 | **Construccion** | 88d | 2016-02-15 | 2016-06-15 |  | 8d |  |  | 3512h |
| 41 | 1.3.1 | **Articulos** | 55d | 2016-02-15 | 2016-04-29 |  | 8d |  |  | 1152h |
| 42 | 1.3.1.1 | FNR-417 Campos adicionales y atributos de artículos. Información de los artículos de alto valor. | 12d | 2016-02-15 | 2016-03-01 | 25 | 62d | 0d | Recurso TIBCO SR 4 | 96h |
| 43 | 1.3.1.2 | FNR-015Recetas de artículos | 8d | 2016-02-25 | 2016-03-07 | 38 | 0d |  | Hector Martinez | 64h |
| 44 | 1.3.1.3 | FR-343.Pantalla Consulta Info. General de Artículos. Muestra una pantalla con la información del artículo. Solicita el UPC/PLU o Artículo para hacer una búsqueda y desplegar la | 11d | 2016-02-24 | 2016-03-09 | 39 | 8d | 0d | Gustavo Morales | 88h |
| 45 | 1.3.1.4 | Export en linea de producto | 1d | 2016-03-02 | 2016-03-02 | 42 | 62d | 0d | Recurso TIBCO SR 4 | 8h |
| 46 | 1.3.1.5 | Export en linea de Plan de surtid | 1d | 2016-02-24 | 2016-02-24 | 37 | 2d | 0d | Luis Castor | 8h |
| 47 | 1.3.1.6 | Export en linea de CasePacks | 1d | 2016-03-08 | 2016-03-08 | 43 | 0d |  | Hector Martinez | 8h |
| 48 | 1.3.1.7 | FNR-933.Auditoría de PMI | 10d | 2016-03-10 | 2016-03-23 | 44 | 8d | 0d | Gustavo Morales | 80h |
| 49 | 1.3.1.8 | FNR-981 Promociones | 14d | 2016-03-03 | 2016-03-22 | 45 | 62d | 0d | Recurso TIBCO SR 4 | 112h |
| 50 | 1.3.1.9 | FR-100 Tarimas en proceso y en armado | 14d | 2016-03-24 | 2016-04-12 | 48 | 8d | 0d | Gustavo Morales | 112h |
| 51 | 1.3.1.10 | FNR-561.Estatus NO COMPRA para analisis de abasto | 8d | 2016-03-09 | 2016-03-18 | 47 | 0d |  | Hector Martinez | 64h |
| 52 | 1.3.1.11 | FR-390.Estatus No Compra Ambientes SYMBOL | 8d | 2016-04-13 | 2016-04-22 | 50 | 8d | 0d | Gustavo Morales | 64h |
| 53 | 1.3.1.12 | FNR-514.Requerimiento se tiene en HEB | 28d | 2016-03-23 | 2016-04-29 | 49 | 62d | 0d | Recurso TIBCO SR 4 | 224h |
| 54 | 1.3.1.13 | FNR- BI 3 Efecto Góndola | 28d | 2016-02-25 | 2016-04-04 | 46 | 2d | 0d | Luis Castor | 224h |

| ID | WBS | Task | Duration | Start | Finish | Predecessors | Total slack | Free slack | Resources | Work |
| --- | --- | --- | --- | --- | --- | --- | --- | --- | --- | --- |
| 55 | 1.3.2 | **Inventario** | 40d | 2016-03-21 | 2016-05-13 |  | 0d |  |  | 616h |
| 56 | 1.3.2.1 | FNR-937.Calendarizacion de Inventario Dinámico desde Tienda | 12d | 2016-03-21 | 2016-04-05 | 51 | 0d |  | Hector Martinez | 96h |
| 57 | 1.3.2.2 | FR-271.Operación/Ajustes a inventario/Tipo de ajuste: transacciones punto de venta | 1d | 2016-04-25 | 2016-04-25 | 52 | 8d | 0d | Gustavo Morales | 8h |
| 58 | 1.3.2.3 | FNR-931 Batch para TAG-Compare | 7d | 2016-05-02 | 2016-05-10 | 53 | 62d | 0d | Recurso TIBCO SR 4 | 56h |
| 59 | 1.3.2.4 | FR-297.Mermas de Articulos x Sucursal | 24d | 2016-04-05 | 2016-05-06 | 54 | 2d | 0d | Luis Castor | 192h |
| 60 | 1.3.2.5 | FNR- BI 4 Artículos sin movimiento | 28d | 2016-04-06 | 2016-05-13 | 56 | 0d |  | Hector Martinez | 224h |
| 61 | 1.3.2.6 | FR-297.Mermas de Articulos x Sucursal | 4d | 2016-04-26 | 2016-04-29 | 57 | 8d | 0d | Gustavo Morales | 32h |
| 62 | 1.3.2.7 | FR-321.Articulos con Inventario Negativo y/o Cero en Linea | 1d | 2016-05-11 | 2016-05-11 | 58 | 62d | 0d | Recurso TIBCO SR 4 | 8h |
| 63 | 1.3.3 | **Piso Venta** | 82d | 2016-02-23 | 2016-06-15 |  | 5d |  |  | 1744h |
| 64 | 1.3.3.1 | FNR-039 Etiquetas en combos y compares | 9d | 2016-05-16 | 2016-05-26 | 60 | 0d |  | Hector Martinez | 72h |
| 65 | 1.3.3.2 | FNR-983 Niveles-EtapasLiquidacion | 10d | 2016-05-27 | 2016-06-09 | 64 | 0d |  | Hector Martinez | 80h |
| 66 | 1.3.3.3 | FNR-1040.Información de Huecos | 18d | 2016-05-02 | 2016-05-25 | 61 | 8d | 0d | Gustavo Morales | 144h |
| 67 | 1.3.3.4 | FR-319.Consu mos Internos por Articulo - presupuesto | 24d | 2016-02-25 | 2016-03-29 | 36 | 9d | 0d | Recurso IPC SR 1 | 192h |
| 68 | 1.3.3.5 | FNR-1010.Motivos de Huecos | 24d | 2016-03-30 | 2016-05-02 | 67 | 9d | 0d | Recurso IPC SR 1 | 192h |
| 69 | 1.3.3.6 | FNR-098.Reporte Redención de Combos | 24d | 2016-05-03 | 2016-06-03 | 68 | 9d | 0d | Recurso IPC SR 1 | 192h |
| 70 | 1.3.3.7 | FNR-140.Combo pérdidas | 24d | 2016-02-23 | 2016-03-25 | 35 | 15d | 0d | Recurso IPC SR 2 | 192h |
| 71 | 1.3.3.8 | FNR-503.Sistematizar Reporte Consumo | 24d | 2016-03-28 | 2016-04-28 | 70 | 15d | 0d | Recurso IPC SR 2 | 192h |
| 72 | 1.3.3.9 | FNR-506.Reporte Redención de PILONES | 24d | 2016-04-29 | 2016-06-01 | 71 | 15d | 0d | Recurso IPC SR 2 | 192h |
| 73 | 1.3.3.10 | FNR-408.Captura Vespertina Huecos | 2d | 2016-06-06 | 2016-06-07 | 69 | 9d | 0d | Recurso IPC SR 1 | 16h |
| 74 | 1.3.3.11 | FNR-134.Procesos Diarios | 28d | 2016-05-09 | 2016-06-15 | 59 | 2d | 0d | Luis Castor | 224h |
| 75 | 1.3.3.12 | FNR-408.Captura Vespertina Huecos | 2d | 2016-06-10 | 2016-06-13 | 65 | 0d |  | Hector Martinez | 16h |
| 76 | 1.3.3.13 | FR-319.Consumos Internos por Articulo | 5d | 2016-05-26 | 2016-06-01 | 66 | 8d | 0d | Gustavo Morales | 40h |
| 77 | 1.4 | **Pruebas Unitarias - Desarrollo** | 42d | 2016-05-12 | 2016-07-08 |  | 23d |  |  | 1432h |
| 78 | 1.4.1 | **Articulos** | 31d | 2016-05-12 | 2016-06-23 |  | 23d |  |  | 560h |
| 79 | 1.4.1.1 | FNR-417 Campos adicionales y atributos de artículos. Información de los artículos de alto valor. | 3d | 2016-05-12 | 2016-05-16 | 62 | 62d | 0d | Recurso TIBCO SR 4; Cesar Alanis | 48h |
| 80 | 1.4.1.2 | FNR-015Recetas de artículos | 2d | 2016-06-14 | 2016-06-15 | 75 | 0d |  | Hector Martinez; Cesar Alanis | 32h |
| 81 | 1.4.1.3 | FR-343.Pantalla Consulta Info. General de Artículos. Muestra una pantalla con la información del artículo. Solicita el UPC/PLU o Artículo para hacer una búsqueda y desplegar la | 3d | 2016-06-02 | 2016-06-06 | 76 | 8d | 0d | Gustavo Morales; Cesar Alanis | 48h |
| 82 | 1.4.1.4 | Export en linea de producto | 1d | 2016-05-17 | 2016-05-17 | 79 | 62d | 0d | Recurso TIBCO SR 4; Cesar Alanis | 16h |
| 83 | 1.4.1.5 | Export en linea de Plan de surtid | 1d | 2016-06-16 | 2016-06-16 | 74 | 2d | 0d | Luis Castor; Cesar Alanis | 16h |
| 84 | 1.4.1.6 | Export en linea de CasePacks | 1d | 2016-06-16 | 2016-06-16 | 80 | 0d |  | Hector Martinez; Cesar Alanis | 16h |
| 85 | 1.4.1.7 | FNR-933.Auditoría de PMI | 3d | 2016-06-07 | 2016-06-09 | 81 | 8d | 0d | Gustavo Morales; Cesar Alanis | 48h |
| 86 | 1.4.1.8 | FNR-981 Promociones | 3d | 2016-05-18 | 2016-05-20 | 82 | 62d | 0d | Recurso TIBCO SR 4; Cesar Alanis | 48h |
| 87 | 1.4.1.9 | FR-100 Tarimas en proceso y en armado | 4d | 2016-06-10 | 2016-06-15 | 85 | 8d | 0d | Gustavo Morales; Cesar Alanis | 64h |
| 88 | 1.4.1.10 | FNR-561.Estatus NO COMPRA para analisis de abasto | 2d | 2016-06-17 | 2016-06-20 | 84 | 0d |  | Hector Martinez; Cesar Alanis | 32h |
| 89 | 1.4.1.11 | FR-390.Estatus No Compra Ambientes SYMBOL | 2d | 2016-06-16 | 2016-06-17 | 87 | 8d | 0d | Gustavo Morales; Cesar Alanis | 32h |
| 90 | 1.4.1.12 | FNR-514.Requerimiento se tiene en HEB | 5d | 2016-05-23 | 2016-05-27 | 86 | 62d | 0d | Recurso TIBCO SR 4; Cesar Alanis | 80h |
| 91 | 1.4.1.13 | FNR- BI 3 Efecto Góndola | 5d | 2016-06-17 | 2016-06-23 | 83 | 2d | 0d | Luis Castor; Cesar Alanis | 80h |

| ID | WBS | Task | Duration | Start | Finish | Predecessors | Total slack | Free slack | Resources | Work |
| --- | --- | --- | --- | --- | --- | --- | --- | --- | --- | --- |
| 92 | 1.4.2 | **Inventario** | 25d | 2016-05-30 | 2016-07-01 |  | 16d |  |  | 304h |
| 93 | 1.4.2.1 | FNR-937.Calendarizacion de Inventario Dinámico desde Tienda | 3d | 2016-06-21 | 2016-06-23 | 88 | 0d |  | Hector Martinez; Cesar Alanis | 48h |
| 94 | 1.4.2.2 | FR-271.Operación/Ajustes a inventario/Tipo de ajuste: transacciones punto de venta | 1d | 2016-06-20 | 2016-06-20 | 89 | 8d | 0d | Gustavo Morales; Cesar Alanis | 16h |
| 95 | 1.4.2.3 | FNR-931 Batch para TAG-Compare | 2d | 2016-05-30 | 2016-05-31 | 90 | 62d | 0d | Recurso TIBCO SR 4; Cesar Alanis | 32h |
| 96 | 1.4.2.4 | FR-297.Mermas de Articulos x Sucursal | 6d | 2016-06-24 | 2016-07-01 | 91 | 2d | 0d | Luis Castor; Cesar Alanis | 96h |
| 97 | 1.4.2.5 | FNR- BI 4 Artículos sin movimiento | 5d | 2016-06-24 | 2016-06-30 | 93 | 0d |  | Hector Martinez; Cesar Alanis | 80h |
| 98 | 1.4.2.6 | FR-297.Mermas de Articulos x Sucursal | 1d | 2016-06-21 | 2016-06-21 | 94 | 8d | 0d | Gustavo Morales; Cesar Alanis | 16h |
| 99 | 1.4.2.7 | FR-321.Articulos con Inventario Negativo y/o Cero en Linea | 1d | 2016-06-01 | 2016-06-01 | 95 | 62d | 0d | Recurso TIBCO SR 4; Cesar Alanis | 16h |
| 100 | 1.4.3 | **Piso Venta** | 27d | 2016-06-02 | 2016-07-08 |  | 6d |  |  | 568h |
| 101 | 1.4.3.1 | FNR-039 Etiquetas en combos y compares | 2d | 2016-07-01 | 2016-07-04 | 97 | 0d |  | Hector Martinez; Cesar Alanis | 32h |
| 102 | 1.4.3.2 | FNR-983 Niveles-EtapasLiquidacion | 3d | 2016-07-05 | 2016-07-07 | 101 | 0d |  | Hector Martinez; Cesar Alanis | 48h |
| 103 | 1.4.3.3 | FNR-1040.Información de Huecos | 5d | 2016-06-22 | 2016-06-28 | 98 | 8d | 0d | Gustavo Morales; Cesar Alanis | 80h |
| 104 | 1.4.3.4 | FR-319.Consu mos Internos por Articulo - presupuesto | 6d | 2016-06-08 | 2016-06-15 | 73 | 9d | 0d | Recurso IPC SR 1 | 48h |
| 105 | 1.4.3.5 | FNR-1010.Motivos de Huecos | 6d | 2016-06-16 | 2016-06-23 | 104 | 9d | 0d | Recurso IPC SR 1 | 48h |
| 106 | 1.4.3.6 | FNR-098.Reporte Redención de Combos | 6d | 2016-06-24 | 2016-07-01 | 105 | 9d | 0d | Recurso IPC SR 1 | 48h |
| 107 | 1.4.3.7 | FNR-140.Combo pérdidas | 6d | 2016-06-02 | 2016-06-09 | 72 | 15d | 0d | Recurso IPC SR 2 | 48h |
| 108 | 1.4.3.8 | FNR-503.Sistematizar Reporte Consumo | 6d | 2016-06-10 | 2016-06-17 | 107 | 15d | 0d | Recurso IPC SR 2 | 48h |
| 109 | 1.4.3.9 | FNR-506.Reporte Redención de PILONES | 6d | 2016-06-20 | 2016-06-27 | 108 | 15d | 0d | Recurso IPC SR 2 | 48h |
| 110 | 1.4.3.10 | FNR-408.Captura Vespertina Huecos | 1d | 2016-07-04 | 2016-07-04 | 106 | 9d | 0d | Recurso IPC SR 1 | 8h |
| 111 | 1.4.3.11 | FNR-134.Procesos Diarios | 5d | 2016-07-04 | 2016-07-08 | 96 | 2d | 0d | Luis Castor; Cesar Alanis | 80h |
| 112 | 1.4.3.12 | FNR-408.Captura Vespertina Huecos | 1d | 2016-07-08 | 2016-07-08 | 102 | 0d |  | Hector Martinez; Cesar Alanis | 16h |
| 113 | 1.4.3.13 | FR-319.Consumos Internos por Articulo | 1d | 2016-06-29 | 2016-06-29 | 103 | 8d | 0d | Gustavo Morales; Cesar Alanis | 16h |
| 114 | 1.5 | **Certificacion - Documentacion** | 38d | 2016-06-02 | 2016-07-25 |  | 27d |  |  | 760h |
| 115 | 1.5.1 | **Articulos** | 31d | 2016-06-02 | 2016-07-14 |  | 27d |  |  | 288h |
| 116 | 1.5.1.1 | FNR-417 Campos adicionales y atributos de artículos. Información de los artículos de alto valor. | 1d | 2016-06-02 | 2016-06-02 | 99 | 62d | 0d | Recurso TIBCO SR 4; Cesar Alanis | 16h |
| 117 | 1.5.1.2 | FNR-015Recetas de artículos | 1d | 2016-07-11 | 2016-07-11 | 112 | 0d |  | Hector Martinez; Cesar Alanis | 16h |
| 118 | 1.5.1.3 | FR-343.Pantalla Consulta Info. General de Artículos. Muestra una pantalla con la información del artículo. Solicita el UPC/PLU o Artículo para hacer una búsqueda y desplegar la | 2d | 2016-06-30 | 2016-07-01 | 113 | 8d | 0d | Gustavo Morales; Cesar Alanis | 32h |
| 119 | 1.5.1.4 | Export en linea de producto | 1d | 2016-06-03 | 2016-06-03 | 116 | 62d | 0d | Recurso TIBCO SR 4; Cesar Alanis | 16h |
| 120 | 1.5.1.5 | Export en linea de Plan de surtid | 1d | 2016-07-11 | 2016-07-11 | 111 | 2d | 0d | Luis Castor; Cesar Alanis | 16h |
| 121 | 1.5.1.6 | Export en linea de CasePacks | 1d | 2016-07-12 | 2016-07-12 | 117 | 0d |  | Hector Martinez; Cesar Alanis | 16h |
| 122 | 1.5.1.7 | FNR-933.Auditoría de PMI | 1d | 2016-07-04 | 2016-07-04 | 118 | 8d | 0d | Gustavo Morales; Cesar Alanis | 16h |
| 123 | 1.5.1.8 | FNR-981 Promociones | 1d | 2016-06-06 | 2016-06-06 | 119 | 62d | 0d | Recurso TIBCO SR 4; Cesar Alanis | 16h |
| 124 | 1.5.1.9 | FR-100 Tarimas en proceso y en armado | 1d | 2016-07-05 | 2016-07-05 | 122 | 8d | 0d | Gustavo Morales; Cesar Alanis | 16h |
| 125 | 1.5.1.10 | FNR-561.Estatus NO COMPRA para analisis de abasto | 1d | 2016-07-13 | 2016-07-13 | 121 | 0d |  | Hector Martinez; Cesar Alanis | 16h |
| 126 | 1.5.1.11 | FR-390.Estatus No Compra Ambientes SYMBOL | 1d | 2016-07-06 | 2016-07-06 | 124 | 8d | 0d | Gustavo Morales; Cesar Alanis | 16h |
| 127 | 1.5.1.12 | FNR-514.Requerimiento se tiene en HEB | 3d | 2016-06-07 | 2016-06-09 | 123 | 62d | 0d | Recurso TIBCO SR 4; Cesar Alanis | 48h |
| 128 | 1.5.1.13 | FNR- BI 3 Efecto Góndola | 3d | 2016-07-12 | 2016-07-14 | 120 | 2d | 0d | Luis Castor; Cesar Alanis | 48h |

| ID | WBS | Task | Duration | Start | Finish | Predecessors | Total slack | Free slack | Resources | Work |
| --- | --- | --- | --- | --- | --- | --- | --- | --- | --- | --- |
| 129 | 1.5.2 | **Inventario** | 28d | 2016-06-10 | 2016-07-19 |  | 24d |  |  | 176h |
| 130 | 1.5.2.1 | FNR-937.Calendarizacion de Inventario Dinámico desde Tienda | 1d | 2016-07-14 | 2016-07-14 | 125 | 0d |  | Hector Martinez; Cesar Alanis | 16h |
| 131 | 1.5.2.2 | FR-271.Operación/Ajustes a inventario/Tipo de ajuste: transacciones punto de venta | 1d | 2016-07-07 | 2016-07-07 | 126 | 8d | 0d | Gustavo Morales; Cesar Alanis | 16h |
| 132 | 1.5.2.3 | FNR-931 Batch para TAG-Compare | 1d | 2016-06-10 | 2016-06-10 | 127 | 62d | 0d | Recurso TIBCO SR 4; Cesar Alanis | 16h |
| 133 | 1.5.2.4 | FR-297.Mermas de Articulos x Sucursal | 3d | 2016-07-15 | 2016-07-19 | 128 | 2d | 0d | Luis Castor; Cesar Alanis | 48h |
| 134 | 1.5.2.5 | FNR- BI 4 Artículos sin movimiento | 3d | 2016-07-15 | 2016-07-19 | 130 | 0d |  | Hector Martinez; Cesar Alanis | 48h |
| 135 | 1.5.2.6 | FR-297.Mermas de Articulos x Sucursal | 1d | 2016-07-08 | 2016-07-08 | 131 | 8d | 0d | Gustavo Morales; Cesar Alanis | 16h |
| 136 | 1.5.2.7 | FR-321.Articulos con Inventario Negativo y/o Cero en Linea | 1d | 2016-06-13 | 2016-06-13 | 132 | 62d |  | Recurso TIBCO SR 4; Cesar Alanis | 16h |
| 137 | 1.5.3 | **Piso Venta** | 20d | 2016-06-28 | 2016-07-25 |  | 4d |  |  | 296h |
| 138 | 1.5.3.1 | FNR-039 Etiquetas en combos y compares | 1d | 2016-07-20 | 2016-07-20 | 134 | 0d |  | Hector Martinez; Cesar Alanis | 16h |
| 139 | 1.5.3.2 | FNR-983 Niveles-EtapasLiquidacion | 1d | 2016-07-21 | 2016-07-21 | 138 | 0d |  | Hector Martinez; Cesar Alanis | 16h |
| 140 | 1.5.3.3 | FNR-1040.Información de Huecos | 2d | 2016-07-11 | 2016-07-12 | 135 | 8d | 0d | Gustavo Morales; Cesar Alanis | 32h |
| 141 | 1.5.3.4 | FR-319.Consu mos Internos por Articulo - presupuesto | 3d | 2016-07-05 | 2016-07-07 | 110 | 9d | 0d | Recurso IPC SR 1 | 24h |
| 142 | 1.5.3.5 | FNR-1010.Motivos de Huecos | 3d | 2016-07-08 | 2016-07-12 | 141 | 9d | 0d | Recurso IPC SR 1 | 24h |
| 143 | 1.5.3.6 | FNR-098.Reporte Redención de Combos | 3d | 2016-07-13 | 2016-07-15 | 142 | 9d | 0d | Recurso IPC SR 1 | 24h |
| 144 | 1.5.3.7 | FNR-140.Combo pérdidas | 3d | 2016-06-28 | 2016-06-30 | 109 | 15d | 0d | Recurso IPC SR 2 | 24h |
| 145 | 1.5.3.8 | FNR-503.Sistematizar Reporte Consumo | 3d | 2016-07-01 | 2016-07-05 | 144 | 15d | 0d | Recurso IPC SR 2 | 24h |
| 146 | 1.5.3.9 | FNR-506.Reporte Redención de PILONES | 3d | 2016-07-06 | 2016-07-08 | 145 | 15d | 0d | Recurso IPC SR 2 | 24h |
| 147 | 1.5.3.10 | FNR-408.Captura Vespertina Huecos | 1d | 2016-07-18 | 2016-07-18 | 143 | 9d | 0d | Recurso IPC SR 1 | 8h |
| 148 | 1.5.3.11 | FNR-134.Procesos Diarios | 2d | 2016-07-20 | 2016-07-21 | 133 | 2d | 0d | Luis Castor; Cesar Alanis | 32h |
| 149 | 1.5.3.12 | FNR-408.Captura Vespertina Huecos | 2d | 2016-07-22 | 2016-07-25 | 139 | 0d |  | Hector Martinez; Cesar Alanis | 32h |
| 150 | 1.5.3.13 | FR-319.Consumos Internos por Articulo | 1d | 2016-07-13 | 2016-07-13 | 140 | 8d | 0d | Gustavo Morales; Cesar Alanis | 16h |
| 151 | 1.6 | **Estabilizacion** | 43d | 2016-07-11 | 2016-09-07 |  | 0d |  |  | 1584h |
| 152 | 1.6.1 | **Ciclo I** | 27d | 2016-07-11 | 2016-08-16 |  | 0d |  |  | 792h |
| 153 | 1.6.1.1 | Articulos | 9d | 2016-07-22 | 2016-08-03 | 148 | 2d |  | Luis Castor; Cesar Alanis | 144h |
| 154 | 1.6.1.2 | Inventario | 9d | 2016-07-26 | 2016-08-05 | 149 | 0d |  | Hector Martinez; Cesar Alanis | 144h |
| 155 | 1.6.1.3 | Piso Venta | 9d | 2016-07-14 | 2016-07-26 | 150 | 8d |  | Gustavo Morales; Cesar Alanis | 144h |
| 156 | 1.6.1.4 | Informatica Bloque A | 5d | 2016-07-19 | 2016-07-25 | 147 | 9d |  | Recurso IPC SR 1 | 40h |
| 157 | 1.6.1.5 | Informatica Bloque B | 5d | 2016-07-11 | 2016-07-15 | 146 | 15d |  | Recurso IPC SR 2 | 40h |
| 158 | 1.6.1.6 | Bug Fixing/Recertificacion | 7d | 2016-08-08 | 2016-08-16 | 153, 154, 155, 156, 157 | 0d |  | Luis Castor; Hector Martinez; Gustavo Morales; Recurso TIBCO SR 4; Cesar Alanis | 280h |

| ID | WBS | Task | Type | Duration | Start | Finish | Predecessors | Total slack | Resources | Work |
| --- | --- | --- | --- | --- | --- | --- | --- | --- | --- | --- |
| 159 | 1.6.2 | **Ciclo II** |  | 16d | 2016-08-17 | 2016-09-07 |  | 0d |  | 792h |
| 160 | 1.6.2.1 | Articulos |  | 9d | 2016-08-17 | 2016-08-29 | 158 | 0d | Luis Castor; Cesar Alanis | 144h |
| 161 | 1.6.2.2 | Inventario |  | 9d | 2016-08-17 | 2016-08-29 | 158 | 0d | Hector Martinez; Cesar Alanis | 144h |
| 162 | 1.6.2.3 | Piso Venta |  | 9d | 2016-08-17 | 2016-08-29 | 158 | 0d | Gustavo Morales; Cesar Alanis | 144h |
| 163 | 1.6.2.4 | Informatica Bloque A |  | 5d | 2016-08-17 | 2016-08-23 | 158 | 4d | Recurso IPC SR 1 | 40h |
| 164 | 1.6.2.5 | Informatica Bloque B |  | 5d | 2016-08-17 | 2016-08-23 | 158 | 4d | Recurso IPC SR 2 | 40h |
| 165 | 1.6.2.6 | Bug Fixing/Recertificacion |  | 7d | 2016-08-30 | 2016-09-07 | 160, 161, 162, 163, 164 | 0d | Luis Castor; Hector Martinez; Gustavo Morales; Recurso TIBCO SR 4; Cesar Alanis | 280h |
| 166 | 1.7 | **Revision de avances** |  | 175d | 2016-01-04 | 2016-09-05 |  | 0d |  |  |
| 167 | 1.7.1 | Reunion de estatus 1 | milestone, manual | 0d | 2016-01-04 | 2016-01-04 |  |  |  |  |
| 168 | 1.7.2 | Reunion de estatus 2 | milestone, manual | 0d | 2016-01-11 | 2016-01-11 |  |  |  |  |
| 169 | 1.7.3 | Reunion de estatus 3 | milestone, manual | 0d | 2016-01-18 | 2016-01-18 |  |  |  |  |
| 170 | 1.7.4 | Reunion de estatus 4 | milestone, manual | 0d | 2016-01-25 | 2016-01-25 |  |  |  |  |
| 171 | 1.7.5 | Reunion de estatus 5 | milestone, manual | 0d | 2016-02-01 | 2016-02-01 |  |  |  |  |
| 172 | 1.7.6 | Reunion de estatus 6 | milestone, manual | 0d | 2016-02-08 | 2016-02-08 |  |  |  |  |
| 173 | 1.7.7 | Reunion de estatus 7 | milestone, manual | 0d | 2016-02-15 | 2016-02-15 |  |  |  |  |
| 174 | 1.7.8 | Reunion de estatus 8 | milestone, manual | 0d | 2016-02-22 | 2016-02-22 |  |  |  |  |
| 175 | 1.7.9 | Reunion de estatus 9 | milestone, manual | 0d | 2016-02-29 | 2016-02-29 |  |  |  |  |
| 176 | 1.7.10 | Reunion de estatus 10 | milestone, manual | 0d | 2016-03-07 | 2016-03-07 |  |  |  |  |
| 177 | 1.7.11 | Reunion de estatus 11 | milestone, manual | 0d | 2016-03-14 | 2016-03-14 |  |  |  |  |
| 178 | 1.7.12 | Reunion de estatus 12 | milestone, manual | 0d | 2016-03-21 | 2016-03-21 |  |  |  |  |
| 179 | 1.7.13 | Reunion de estatus 13 | milestone, manual | 0d | 2016-03-28 | 2016-03-28 |  |  |  |  |
| 180 | 1.7.14 | Reunion de estatus 14 | milestone, manual | 0d | 2016-04-04 | 2016-04-04 |  |  |  |  |
| 181 | 1.7.15 | Reunion de estatus 15 | milestone, manual | 0d | 2016-04-11 | 2016-04-11 |  |  |  |  |
| 182 | 1.7.16 | Reunion de estatus 16 | milestone, manual | 0d | 2016-04-18 | 2016-04-18 |  |  |  |  |
| 183 | 1.7.17 | Reunion de estatus 17 | milestone, manual | 0d | 2016-04-25 | 2016-04-25 |  |  |  |  |
| 184 | 1.7.18 | Reunion de estatus 18 | milestone, manual | 0d | 2016-05-02 | 2016-05-02 |  |  |  |  |
| 185 | 1.7.19 | Reunion de estatus 19 | milestone, manual | 0d | 2016-05-09 | 2016-05-09 |  |  |  |  |
| 186 | 1.7.20 | Reunion de estatus 20 | milestone, manual | 0d | 2016-05-16 | 2016-05-16 |  |  |  |  |
| 187 | 1.7.21 | Reunion de estatus 21 | milestone, manual | 0d | 2016-05-23 | 2016-05-23 |  |  |  |  |
| 188 | 1.7.22 | Reunion de estatus 22 | milestone, manual | 0d | 2016-05-30 | 2016-05-30 |  |  |  |  |
| 189 | 1.7.23 | Reunion de estatus 23 | milestone, manual | 0d | 2016-06-06 | 2016-06-06 |  |  |  |  |
| 190 | 1.7.24 | Reunion de estatus 24 | milestone, manual | 0d | 2016-06-13 | 2016-06-13 |  |  |  |  |
| 191 | 1.7.25 | Reunion de estatus 25 | milestone, manual | 0d | 2016-06-20 | 2016-06-20 |  |  |  |  |
| 192 | 1.7.26 | Reunion de estatus 26 | milestone, manual | 0d | 2016-06-27 | 2016-06-27 |  |  |  |  |
| 193 | 1.7.27 | Reunion de estatus 27 | milestone, manual | 0d | 2016-07-04 | 2016-07-04 |  |  |  |  |
| 194 | 1.7.28 | Reunion de estatus 28 | milestone, manual | 0d | 2016-07-11 | 2016-07-11 |  |  |  |  |
| 195 | 1.7.29 | Reunion de estatus 29 | milestone, manual | 0d | 2016-07-18 | 2016-07-18 |  |  |  |  |
| 196 | 1.7.30 | Reunion de estatus 30 | milestone, manual | 0d | 2016-07-25 | 2016-07-25 |  |  |  |  |
| 197 | 1.7.31 | Reunion de estatus 31 | milestone, manual | 0d | 2016-08-01 | 2016-08-01 |  |  |  |  |
| 198 | 1.7.32 | Reunion de estatus 32 | milestone, manual | 0d | 2016-08-08 | 2016-08-08 |  |  |  |  |
| 199 | 1.7.33 | Reunion de estatus 33 | milestone, manual | 0d | 2016-08-15 | 2016-08-15 |  |  |  |  |
| 200 | 1.7.34 | Reunion de estatus 34 | milestone, manual | 0d | 2016-08-22 | 2016-08-22 |  |  |  |  |
| 201 | 1.7.35 | Reunion de estatus 35 | milestone, manual | 0d | 2016-08-29 | 2016-08-29 |  |  |  |  |
| 202 | 1.7.36 | Reunion de estatus 36 | milestone, manual | 0d | 2016-09-05 | 2016-09-05 |  |  |  |  |
